# Milestone_1

Schedule from MS Project, 2016-02-22 to 2016-06-17, costs in $.

## Calendars

- Standard: Mon-Fri 08:00-12:00, 13:00-17:00; Sat-Sun off.
- Swing Shift: Mon-Fri 15:00-19:30, 20:00-23:30; Sat-Sun off.

## Resources

| Resource | Rate |
| --- | --- |
| Pratyush Kulwal | 45 |
| Bob T. Adams | 38 |
| Jessica A. Thomas | 35 |
| Mary J. Ryan | 29 |

## Schedule

| ID | WBS | Task | Duration | Start | Finish | Predecessors | Total slack | Free slack | Constraint | Resources | Work | Cost |
| --- | --- | --- | --- | --- | --- | --- | --- | --- | --- | --- | --- | --- |
| 1 | 1 | **Initiate Project** | 6.2d | 2016-02-22 08:00 | 2016-03-01 09:36 |  | 78.62d |  |  |  | 24h | 986.8 |
| 2 | 1.1 | Identify Stakeholders | 8h | 2016-02-22 08:00 | 2016-02-22 17:00 |  | 73.36d | 0d |  | Pratyush Kulwal [50%] | 4h | 180 |
| 3 | 1.2 | Reqirement Elicitation for project scope from management, team and stakeholders | 2h | 2016-02-22 17:00 | 2016-02-23 10:00 | 2 | 73.87d | 0.75d | start no earlier than 2016-02-22 10:00 | Bob T. Adams; Jessica A. Thomas; Mary J. Ryan; Pratyush Kulwal [50%] | 6h | 204 |
| 4 | 1.3 | Create Project Charter | 12h | 2016-02-24 08:00 | 2016-02-25 12:00 | 3 | 73.12d | 0.5d | start no earlier than 2016-02-24 08:00 | Pratyush Kulwal [50%] | 6h | 270 |
| 5 | 1.4 | Review and approval of Project Charter | 16h | 2016-02-26 08:00 | 2016-02-29 17:00 | 4 | 72.62d | 0d | finish no earlier than 2016-02-29 17:00 | Pratyush Kulwal [25%] | 4h | 180 |
| 6 | 1.5 | Project Kickoff Meeting | 1.6h | 2016-03-01 08:00 | 2016-03-01 09:36 | 5 | 72.62d | 0d |  | Bob T. Adams; Jessica A. Thomas; Pratyush Kulwal [50%] | 4h | 152.8 |
| 7 | 2 | **Plan Project** | 15.14d | 2016-02-22 08:00 | 2016-03-14 09:08 |  | 69.86d |  |  |  | 67.5h | 2,627.45 |
| 8 | 2.1 | **Requirement Gathering** | 8.36d | 2016-02-22 08:00 | 2016-03-03 10:51 |  | 76.64d |  |  |  | 31h | 1,145.44 |
| 9 | 2.1.1 | Prepare List of Requirement Items | 0.18d | 2016-03-01 09:36 | 2016-03-01 11:03 | 6 | 72.62d |  |  | Bob T. Adams; Mary J. Ryan; Pratyush Kulwal [50%]; Jessica A. Thomas [34.2%] | 2h | 73.5 |
| 10 | 2.1.2 | Determine Furniture Requirements | 4h | 2016-03-01 08:00 | 2016-03-01 12:00 |  | 72.5d |  | start no earlier than 2016-03-01 08:00 | Jessica A. Thomas | 4h | 140 |
| 11 | 2.1.3 | Obtain Client inputs on office requirements | 4h | 2016-03-02 08:00 | 2016-03-02 12:00 |  | 64.64d | 0d | start no earlier than 2016-03-02 08:00 | Jessica A. Thomas; Pratyush Kulwal [50%] | 4h | 160 |
| 12 | 2.1.4 | Analyze Design of furniture (Computer Stations and Tables) | 0.21d | 2016-03-02 08:00 | 2016-03-02 09:42 |  | 71.79d |  | start no earlier than 2016-03-02 08:00 | Bob T. Adams [50%]; Jessica A. Thomas; Mary J. Ryan | 1h | 37.14 |
| 13 | 2.1.5 | Analyzing existing network wiring configurations in building | 0.5d | 2016-02-22 08:00 | 2016-02-22 12:00 |  | 78.5d |  |  | Bob T. Adams | 4h | 152 |
| 14 | 2.1.6 | Determining furniture placement requirements | 8h | 2016-02-22 08:00 | 2016-02-22 17:00 |  | 78d |  |  | Bob T. Adams [25%] | 2h | 76 |
| 15 | 2.1.7 | Verify Network Hardware and other peripheral equipments | 0.4d | 2016-03-02 08:00 | 2016-03-02 11:12 |  | 71.6d |  | start no earlier than 2016-03-02 08:00 | Bob T. Adams [37.5%]; Mary J. Ryan | 1.5h | 54.3 |
| 16 | 2.1.8 | Verify Required Software applications | 8h | 2016-02-22 08:00 | 2016-02-22 17:00 |  | 78d |  |  | Jessica A. Thomas [25%] | 2h | 70 |
| 17 | 2.1.9 | Verify Internet Access Connectvity | 8h | 2016-02-22 08:00 | 2016-02-22 17:00 |  | 78d |  |  | Mary J. Ryan [6.2%] | 0.5h | 14.5 |
| 18 | 2.1.10 | Document Specific Network Wiring Requirements | 8h | 2016-02-22 08:00 | 2016-02-22 17:00 |  | 78d |  |  | Mary J. Ryan [50%] | 4h | 116 |
| 19 | 2.1.11 | Finalize Designs of new furniture, computer stations and tables | 0.86d | 2016-03-02 13:00 | 2016-03-03 10:51 | 11 | 64.64d | 0d |  | Bob T. Adams; Pratyush Kulwal [50%] | 6h | 252 |
| 20 | 2.2 | **Place order for new furniture and equipments** | 2d | 2016-03-03 10:51 | 2016-03-07 10:51 |  | 70.64d |  |  |  | 12.5h | 439.72 |
| 21 | 2.2.1 | Obtain Cost Quotations from Vendors | 8h | 2016-03-03 10:51 | 2016-03-04 10:51 | 19 | 64.64d | 0d |  | Jessica A. Thomas | 8h | 280 |
| 22 | 2.2.2 | Determine Purchasing and Financing Procedures | 2.22h | 2016-03-03 10:51 | 2016-03-03 14:04 | 19 | 65.37d | 0.72d | start no earlier than 2016-03-03 08:00 | Jessica A. Thomas [12.5%]; Pratyush Kulwal [50%] | 0.5h | 19.72 |
| 23 | 2.2.3 | Issue Purchase Orders to Vendors for Furniture | 8h | 2016-03-04 10:51 | 2016-03-07 10:51 | 22, 21 | 68.64d |  |  | Jessica A. Thomas [25%] | 2h | 70 |
| 24 | 2.2.4 | Issue Purchase Orders to Vendors for Ordering PCs, VoIP Handsets, Printer-Copier device, Cisco ME3400 aggregated switch and connecting cables | 8h | 2016-03-04 10:51 | 2016-03-07 10:51 | 21, 22 | 64.64d | 0.64d |  | Jessica A. Thomas [25%] | 2h | 70 |
| 25 | 2.3 | Develop Project Management Plan | 16h | 2016-03-04 08:00 | 2016-03-07 17:00 |  | 68d |  | start no earlier than 2016-03-04 08:00 | Pratyush Kulwal [50%] | 8h | 360 |
| 26 | 2.4 | Develop Resource Plan | 16h | 2016-03-09 08:00 | 2016-03-10 17:00 |  | 63.86d | 0d | start no earlier than 2016-03-09 08:00 | Pratyush Kulwal [50%] | 8h | 360 |
| 27 | 2.5 | Develop Test Plan | 1.14d | 2016-03-11 08:00 | 2016-03-14 09:08 | 26 | 63.86d |  | start no earlier than 2016-03-08 08:00 | Bob T. Adams; Jessica A. Thomas; Mary J. Ryan; Pratyush Kulwal [50%] | 8h | 322.29 |

| ID | WBS | Task | Duration | Start | Finish | Predecessors | Total slack | Free slack | Constraint | Calendar | Resources | Work | Cost |
| --- | --- | --- | --- | --- | --- | --- | --- | --- | --- | --- | --- | --- | --- |
| 28 | 3 | **Execute Project** | 63.25d | 2016-02-22 15:00 | 2016-05-19 17:00 |  | 18d | 10d |  |  |  | 162.5h | 5,667 |
| 29 | 3.1 | Refine and Adjust Project Scope | 8h | 2016-03-08 08:00 | 2016-03-08 17:00 | 24 | 64d |  | start no earlier than 2016-03-08 08:00 |  | Pratyush Kulwal [50%] | 4h | 180 |
| 30 | 3.2 | **Procurement** | 17d | 2016-03-25 08:00 | 2016-04-18 17:00 |  | 25.75d |  |  |  |  | 6h | 210 |
| 31 | 3.2.1 | Receive Equipments | 8h | 2016-03-25 08:00 | 2016-03-25 17:00 |  | 34.75d | 15d | finish no earlier than 2016-03-25 17:00 |  | Jessica A. Thomas [25%] | 2h | 70 |
| 32 | 3.2.2 | Receive Furniture | 8h | 2016-04-15 08:00 | 2016-04-15 17:00 |  | 19.75d | 0d | start no earlier than 2016-04-15 08:00 |  | Jessica A. Thomas [25%] | 2h | 70 |
| 33 | 3.2.3 | Verify Correctness of Shipped Items | 8h | 2016-04-18 08:00 | 2016-04-18 17:00 | 31, 32 | 19.75d | 0.75d |  |  | Jessica A. Thomas [25%] | 2h | 70 |
| 34 | 3.3 | **Equipment and Network Installation** | 63.25d | 2016-02-22 15:00 | 2016-05-19 17:00 |  | 18d |  |  |  |  | 71.5h | 2,454.5 |
| 35 | 3.3.1 | Install Network Cabling Infrastructure in building ceilings and walls | 24h | 2016-04-19 15:00 | 2016-05-13 17:00 | 33 | 12d | 0.75d | start no earlier than 2016-03-11 08:00 | Swing Shift | Bob T. Adams | 24h | 912 |
| 36 | 3.3.2 | Place New Furniture in Final Position | 4h | 2016-04-19 15:00 | 2016-04-20 17:00 | 33 | 33d |  |  | Swing Shift | Jessica A. Thomas; Mary J. Ryan | 8h | 256 |
| 37 | 3.3.3 | Assemble and verify operation of 10 new PC Workstations | 10h | 2016-02-22 15:00 | 2016-02-26 17:00 |  | 57d | 0.75d |  | Swing Shift | Jessica A. Thomas | 10h | 350 |
| 38 | 3.3.4 | Assemble and verify operation of 10 new VoIP handsets | 2.5h | 2016-04-19 15:00 | 2016-04-20 15:30 | 33 | 29.19d | 0d |  | Swing Shift | Mary J. Ryan | 2.5h | 72.5 |
| 39 | 3.3.5 | Assemble and Test New Copier/Printer | 8h | 2016-04-11 15:00 | 2016-04-14 17:00 |  | 23d | 0.75d | start no earlier than 2016-04-11 08:00 | Swing Shift | Bob T. Adams [37.5%] | 3h | 114 |
| 40 | 3.3.6 | Connect system to local switch to core router | 8h | 2016-03-11 15:00 | 2016-03-16 17:00 |  | 48d | 0.75d | start no earlier than 2016-03-11 08:00 | Swing Shift | Mary J. Ryan [12.5%] | 1h | 29 |
| 41 | 3.3.7 | Install and Configure Wireless Access Points | 8h | 2016-02-22 15:00 | 2016-02-25 17:00 |  | 62d | 0.75d |  | Swing Shift | Mary J. Ryan [50%] | 4h | 116 |
| 42 | 3.3.8 | Connect network outlets and confirm connectivity | 8h | 2016-02-22 15:00 | 2016-02-25 17:00 |  | 72d |  |  | Swing Shift | Mary J. Ryan [75%] | 6h | 174 |
| 43 | 3.3.9 | Connect Network Patch Cables | 8h | 2016-02-22 15:00 | 2016-02-25 17:00 |  | 68d | 56.75d |  | Swing Shift | Mary J. Ryan [25%] | 2h | 58 |
| 44 | 3.3.10 | Install Linux server for MetroTech | 8h | 2016-02-22 15:00 | 2016-02-25 17:00 |  | 72d |  |  | Swing Shift | Jessica A. Thomas [12.5%] | 1h | 35 |
| 45 | 3.3.11 | Install and Test Copier/Printer | 8h | 2016-04-15 15:00 | 2016-04-20 17:00 | 39 | 23d | 0.75d |  | Swing Shift | Bob T. Adams [25%] | 2h | 76 |
| 46 | 3.3.12 | Cable Management | 8h | 2016-05-16 15:00 | 2016-05-19 17:00 | 35, 43 | 12d |  |  | Swing Shift | Mary J. Ryan [25%] | 2h | 58 |
| 47 | 3.3.13 | Install required software on new PC's | 8h | 2016-02-29 15:00 | 2016-03-03 17:00 | 37 | 57d | 0.75d |  | Swing Shift | Jessica A. Thomas [62.5%] | 5h | 175 |
| 48 | 3.3.14 | Install Cisco ME3400 Switch | 8h | 2016-02-22 15:00 | 2016-02-25 17:00 |  | 72d |  |  | Swing Shift | Mary J. Ryan [12.5%] | 1h | 29 |
| 49 | 3.4 | **Testing** | 53.75d | 2016-02-26 08:00 | 2016-05-11 15:00 |  | 16.25d | 2.25d |  |  |  | 41h | 1,398.5 |
| 50 | 3.4.1 | Verify Internet Access Systems Connectivity | 8h | 2016-03-17 08:00 | 2016-03-17 17:00 | 40 | 48.25d | 33.88d |  |  | Mary J. Ryan [25%] | 2h | 58 |
| 51 | 3.4.2 | Verify required network hardware and other peripheral equipment | 8h | 2016-03-17 08:00 | 2016-03-17 17:00 | 40 | 48.25d | 33.88d |  |  | Mary J. Ryan [18.8%] | 1.5h | 43.5 |
| 52 | 3.4.3 | Verify required software applications | 8h | 2016-03-04 08:00 | 2016-03-04 17:00 | 47 | 57.25d | 42.88d |  |  | Jessica A. Thomas [25%] | 2h | 70 |
| 53 | 3.4.4 | Verify Operation of Wired Network | 8h | 2016-03-17 08:00 | 2016-03-17 17:00 | 40 | 48.25d | 33.88d |  |  | Mary J. Ryan [25%] | 2h | 58 |
| 54 | 3.4.5 | Verify Operation of Wireless Network | 8h | 2016-02-26 08:00 | 2016-02-26 17:00 | 41 | 62.25d | 47.88d |  |  | Mary J. Ryan [12.5%] | 1h | 29 |
| 55 | 3.4.6 | Test Copier/Printer for network connectivity | 8h | 2016-04-21 08:00 | 2016-04-21 17:00 | 45 | 23.25d | 8.88d |  |  | Bob T. Adams [12.5%] | 1h | 38 |
| 56 | 3.4.7 | Configure and Test each individual PC Workstation | 1.88d | 2016-05-03 08:00 | 2016-05-04 16:00 | 37 | 14.38d | 0d | start no earlier than 2016-05-03 08:00 |  | Jessica A. Thomas | 15h | 525 |
| 57 | 3.4.8 | Configure and Test each individual VoIP handset | 8h | 2016-04-20 15:30 | 2016-04-21 15:30 | 38 | 23.44d | 9.06d |  |  | Bob T. Adams [31.2%] | 2.5h | 95 |
| 58 | 3.4.9 | Updated Test Plan Report | 8h | 2016-05-04 16:00 | 2016-05-11 15:00 | 50, 51, 52, 53, 54, 55, 56, 57 | 10.25d | 0d |  |  | Bob T. Adams; Jessica A. Thomas; Mary J. Ryan; Pratyush Kulwal [50%] | 14h | 482 |

| ID | WBS | Task | Duration | Start | Finish | Predecessors | Total slack | Free slack | Constraint | Resources | Work | Cost |
| --- | --- | --- | --- | --- | --- | --- | --- | --- | --- | --- | --- | --- |
| 59 | 3.5 | **Documentation and training** | 4d | 2016-05-16 08:00 | 2016-05-19 17:00 |  | 18d |  |  |  | 40h | 1,424 |
| 60 | 3.5.1 | Develop User Manual for network and server with diagrams | 8h | 2016-05-16 08:00 | 2016-05-16 17:00 | 49 | 15d |  | start no earlier than 2016-05-16 08:00 | Bob T. Adams; Jessica A. Thomas | 16h | 584 |
| 61 | 3.5.2 | Develop Training Material | 24h | 2016-05-17 08:00 | 2016-05-19 17:00 | 49 | 12d |  | start no earlier than 2016-05-17 08:00 | Jessica A. Thomas | 24h | 840 |
| 62 | 4 | **Monitoring** | 16.25d | 2016-05-11 15:00 | 2016-06-02 17:00 |  | 8d | 0d |  |  | 56h | 2,520 |
| 63 | 4.1 | Update Project Management Plan | 48h | 2016-05-11 15:00 | 2016-05-19 15:00 | 58 | 10.25d | 8.25d |  | Pratyush Kulwal [50%] | 24h | 1,080 |
| 64 | 4.2 | Creating and publishing project progress report | 16h | 2016-06-01 08:00 | 2016-06-02 17:00 | 63, 65 | 2d |  |  | Pratyush Kulwal [50%] | 8h | 360 |
| 65 | 4.3 | Project Scope Change Management | 48h | 2016-05-24 08:00 | 2016-05-31 17:00 |  | 2d | 0d | start no earlier than 2016-05-24 08:00 | Pratyush Kulwal [50%] | 24h | 1,080 |
| 66 | 5 | **Close Project** | 11d | 2016-06-03 08:00 | 2016-06-17 17:00 |  | 0d |  |  |  | 40h | 1,570 |
| 67 | 5.1 | 4.1 Prepare Lessons Learned report | 24h | 2016-06-03 08:00 | 2016-06-07 17:00 | 28, 62 | 8d |  |  | Pratyush Kulwal [50%] | 12h | 540 |
| 68 | 5.2 | 4.2 Deallocate resources | 8h | 2016-06-08 08:00 | 2016-06-08 17:00 | 28, 62 | 7d |  | start no earlier than 2016-06-08 08:00 | Pratyush Kulwal [50%] | 4h | 180 |
| 69 | 5.3 | Training and Support | 10h | 2016-06-16 15:00 | 2016-06-17 17:00 |  | 0d |  | finish no earlier than 2016-06-17 17:00 | Bob T. Adams; Mary J. Ryan | 20h | 670 |
| 70 | 5.4 | Project Sign-Off | 8h | 2016-06-09 08:00 | 2016-06-09 17:00 |  | 6d |  | start no earlier than 2016-06-09 08:00 | Pratyush Kulwal [50%] | 4h | 180 |
